# Новый график 8108

Schedule from MS Project, 2023-03-01 to 2023-05-05.

## Calendars

- Стандартный: Mon-Fri 09:00-13:00, 14:00-18:00; Sat-Sun off.

## Resources

| Resource |
| --- |
| ОГП |
| УИСИ |
| ОВВ ПИР |
| ОАД |
| ЭТО |
| ОТВиП |
| СО 2 |
| ГГТМиПМ |
| ОЗ |
| ОС 1 |
| ОПОС |
| ООВОС |
| ГИП |

## Schedule

| ID | WBS | Task | Type | Duration | Start | Finish | Predecessors | Baseline start | Baseline finish | Baseline duration | Total slack | Free slack | Constraint | Resources | Work | Text3 | Text10 |
| --- | --- | --- | --- | --- | --- | --- | --- | --- | --- | --- | --- | --- | --- | --- | --- | --- | --- |
| 1 | 1 | **Строительство кустового основания и дороги** |  | 48d | 2023-03-01 | 2023-05-05 |  | 2007-06-29 | 2008-12-31 | 393.12d | 0d |  |  |  | 1264h |  |  |
| 2 | 1.1 | **Проектные работы** |  | 48d | 2023-03-01 | 2023-05-05 |  | 2007-08-28 | 2008-09-30 | 285.12d | 0d |  |  |  | 1264h |  |  |
| 3 | 1.1.1 | Выдача набора сооружений на КО | milestone | 0d | 2023-03-01 | 2023-03-01 |  |  |  |  | 4d |  | start no earlier than 2023-03-01 | ОГП |  | ОТПСС | ПД; РД |
| 4 | 1.1.2 | **Инженерные изыскания** |  | 10d | 2023-03-06 | 2023-03-17 |  |  |  |  | 0d |  |  |  | 80h |  |  |
| 5 | 1.1.2.1 | Выдача промежуточных ИИ |  | 1d | 2023-03-06 | 2023-03-06 |  |  |  |  | 0d |  | start no earlier than 2023-03-06 | УИСИ | 8h | ОУИ | ПД; РД |
| 6 | 1.1.2.2 | Выдача отчета ИИ (стадия ПД) |  | 9d | 2023-03-07 | 2023-03-17 | 5 |  |  |  | 18d | 2d | start no earlier than 2016-07-29 | УИСИ | 72h | ОУИ | ПД; РД |
| 7 | 1.1.3 | **ОГП** |  | 25d | 2023-03-07 | 2023-04-10 |  |  |  |  | 0d |  |  |  | 344h |  |  |
| 8 | 1.1.3.1 | **Кустовые основания** |  | 21d | 2023-03-07 | 2023-04-04 |  |  |  |  | 0d |  |  |  | 144h |  |  |
| 9 | 1.1.3.1.1 | Предварительный генплан куста на период бурения |  | 1d | 2023-03-07 | 2023-03-07 | 3, 5, 31 |  |  |  | 0d |  | start no earlier than 2016-04-20 | ОГП | 8h | ОГП | ПД; РД |
| 10 | 1.1.3.1.2 | План организации рельефа |  | 6d | 2023-03-08 | 2023-03-15 | 9 |  |  |  | 0d |  |  | ОГП | 48h | ОГП | ПД; РД |
| 11 | 1.1.3.1.3 | Выдача задания ОГП в ОТВиП на сбор поверхностных и талых вод с площадки |  | 1d | 2023-03-16 | 2023-03-16 | 10 |  |  |  | 0d |  |  | ОГП | 8h | ОГП | ПД; РД |
| 12 | 1.1.3.1.4 | Окончательный генплан (на период строительства) |  | 2d | 2023-03-20 | 2023-03-21 | 11, 35, 61 |  |  |  | 0d |  |  | ОГП | 16h | ОГП | ПД; РД |
| 13 | 1.1.3.1.5 | Объемы работ по рекультивации кустового основания |  | 1d | 2023-04-04 | 2023-04-04 | 12, 16 | 2015-02-05 |  | 0d | 3d | 0d |  | ОГП | 8h | ОГП | ПД |
| 14 | 1.1.3.1.6 | Выдача задания ОГП в СО на забурное устройство, колодец с шибирной задвижкой, ограждением, т.д |  | 1d | 2023-03-22 | 2023-03-22 | 12 |  |  |  | 3d | 0d |  | ОГП | 8h | ОГП | ПД; РД |
| 15 | 1.1.3.1.7 | Задание на отвод земель в ОЗ |  | 1d | 2023-03-16 | 2023-03-16 | 10 | 2015-01-30 |  | 1d | 12d | 5d |  | ОГП | 8h | ОГП | ПД |
| 16 | 1.1.3.1.8 | На составление смет (стадия РД) |  | 2d | 2023-03-31 | 2023-04-03 | 27 | 2015-02-05 |  | 4d | 3d | 0d | finish no earlier than 2016-08-31 | ОГП | 16h | ОГП | ПД; РД |
| 17 | 1.1.3.1.9 | Отработка тома ПБ по кустовой площадке |  | 2d | 2023-03-23 | 2023-03-24 | 12, 60 | 2015-02-03 |  | 2d | 23d | 0d |  | ОГП | 16h | ОГП | ПД |
| 18 | 1.1.3.1.10 | На разработку раздела тома ПЗУ в ДЭ, ОАД |  | 1d | 2023-03-22 | 2023-03-22 | 12 | 2015-01-30 |  | 1d | 25d | 1d |  | ОГП | 8h | ОГП | ПД |
| 19 | 1.1.3.2 | **Документация ГИПу** |  | 14d | 2023-03-22 | 2023-04-10 |  | 2015-02-20 |  | 30d | 6d |  |  |  | 200h |  |  |
| 20 | 1.1.3.2.1 | Отработка разделов ПЗ (ОГП) |  | 2d | 2023-03-30 | 2023-03-31 | 112, 86 | 2015-02-13 |  | 3d | 21d | 0d |  | ОГП | 16h | ОГП | ПД |
| 21 | 1.1.3.2.2 | Отработка разделов ОБЭ (ОГП) |  | 3d | 2023-03-30 | 2023-04-03 | 12, 37, 86 | 2015-02-12 |  | 5d | 18d | 0d |  | ОГП | 24h | ОГП | ПД |
| 22 | 1.1.3.2.3 | Нормоконтоль тома ОБЭ (ОГП) |  | 2d | 2023-04-04 | 2023-04-05 | 21 |  |  |  | 18d | 0d |  | ОВВ ПИР | 16h | ОВВ ПИР | ПД |
| 23 | 1.1.3.2.4 | Выдача ГИПу ОБЭ (ОГП) |  | 3d | 2023-04-06 | 2023-04-10 | 22 | 2015-02-13 |  | 1d | 18d |  |  | ОГП | 24h | ОГП | ПД |
| 24 | 1.1.3.2.5 | Разработка ПЗУ |  | 5d | 2023-03-22 | 2023-03-28 | 6, 12 | 2015-02-19 |  | 15d | 16d | 0d |  | ОГП | 40h | ОГП | ПД |
| 25 | 1.1.3.2.6 | Нормоконтроль ПЗУ (ОГП) |  | 2d | 2023-03-29 | 2023-03-30 | 24 |  |  |  | 24d | 0d |  | ОВВ ПИР | 16h | ОВВ ПИР | ПД |
| 26 | 1.1.3.2.7 | Выдача ГИПу (ПЗУ) |  | 1d | 2023-03-31 | 2023-03-31 | 25 |  |  |  | 24d |  |  | ОГП | 8h | ОГП | ПД |
| 27 | 1.1.3.2.8 | Разработка рабочих чертежей |  | 4d | 2023-03-27 | 2023-03-30 | 12, 72 |  |  |  | 3d | 0d | start no earlier than 2017-08-04 | ОГП | 32h | ОГП | ПД; РД |
| 28 | 1.1.3.2.9 | Нормоконтроль рабочих чертежей (ОГП) |  | 2d | 2023-03-31 | 2023-04-03 | 27 |  |  |  | 22d | 0d |  | ОВВ ПИР | 16h | ОВВ ПИР | РД |
| 29 | 1.1.3.2.10 | Выдача ГИПу (рабочие чертежи ГП) |  | 1d | 2023-04-04 | 2023-04-04 | 28 |  |  |  | 22d | 3d |  | ОГП | 8h | ОГП | РД |

| ID | WBS | Task | Type | Duration | Start | Finish | Predecessors | Baseline start | Baseline duration | Total slack | Free slack | Constraint | Resources | Work | Text3 | Text10 | Text1 | Text26 |
| --- | --- | --- | --- | --- | --- | --- | --- | --- | --- | --- | --- | --- | --- | --- | --- | --- | --- | --- |
| 30 | 1.1.4 | **Отдел автомобильных дорог** |  | 26d | 2023-03-07 | 2023-04-11 |  | 2015-02-13 | 28d | 9d |  |  |  | 288h |  |  |  |  |
| 31 | 1.1.4.1 | На разработку предварительного генплана | inactive | 1d | 2023-03-07 | 2023-03-07 | 5 | 2015-01-21 | 3d | -1d | 0d | start no earlier than 2019-08-22 | ОАД | 8h | ОАД | ПД; РД |  |  |
| 32 | 1.1.4.2 | Выдача задания в ОТВиП на сбор поверхностных и талых вод с проезжей части |  | 1d | 2023-03-07 | 2023-03-07 | 5 |  |  | 9d | 0d |  | ОАД | 8h |  | ПД; РД |  |  |
| 33 | 1.1.4.3 | Задание на пересечение с ВЛ и линиями связи |  | 1d | 2023-03-16 | 2023-03-16 | 5, 10 |  |  | 10d | 0d |  | ОАД | 8h | ОАД | ПД; РД |  |  |
| 34 | 1.1.4.4 | Задание на пересечение с трубопроводами |  | 1d | 2023-03-16 | 2023-03-16 | 5, 10 |  |  | 10d | 3d |  | ОАД | 8h | ОАД | ПД; РД |  |  |
| 35 | 1.1.4.5 | На разработку окончального генплана в ОГП | inactive | 1d | 2023-03-16 | 2023-03-16 | 10 | 2015-01-27 | 3d | 1d |  |  | ОАД | 8h | ОАД | ПД; РД |  |  |
| 36 | 1.1.4.6 | Задание на отвод земель в ОЗ |  | 2d | 2023-03-22 | 2023-03-23 | 12, 33, 34 | 2015-02-02 | 2d | 7d | 0d |  | ОАД | 16h | ОАД | ПД; РД |  |  |
| 37 | 1.1.4.7 | Отработка разделов ОБЭ |  | 1d | 2023-03-24 | 2023-03-24 | 36 | 2015-01-30 | 1d | 21d | 3d |  | ОАД | 8h | ОАД | ПД |  |  |
| 38 | 1.1.4.8 | На составление смет (стадия РД) |  | 5d | 2023-04-05 | 2023-04-11 | 46 | 2015-02-06 | 1d | 0d |  | finish no earlier than 2016-08-29 | ОАД | 40h | ОАД | РД |  |  |
| 39 | 1.1.4.9 | Отработка тома ПБ по кустовой площадке |  | 1d | 2023-03-23 | 2023-03-23 | 12, 60 | 2015-02-04 | 4d | 24d | 1d |  | ОАД | 8h | ОАД | ПД |  |  |
| 40 | 1.1.4.10 | **Документация ГИПу** |  | 13d | 2023-03-22 | 2023-04-07 |  | 2015-02-13 | 14d | 0d |  |  |  | 192h |  |  |  |  |
| 41 | 1.1.4.10.1 | Отработка разделов ПЗУ |  | 2d | 2023-03-24 | 2023-03-27 | 18, 36, 112 | 2015-02-12 | 4d | 24d | 0d |  | ОАД | 16h | ОАД | ПД |  |  |
| 42 | 1.1.4.10.2 | Отработка разделов ПЗ |  | 1d | 2023-03-28 | 2023-03-28 | 41, 112 | 2015-02-13 | 1d | 24d | 3d |  | ОАД | 8h | ОАД | ПД |  |  |
| 43 | 1.1.4.10.3 | Разработка ПЗУ (ОАД) |  | 5d | 2023-03-24 | 2023-03-30 | 12, 35, 36, 62 |  |  | 14d | 0d |  | ОАД | 40h | ОАД | ПД |  |  |
| 44 | 1.1.4.10.4 | Нормоконтроль ПЗУ (ОАД) |  | 2d | 2023-03-31 | 2023-04-03 | 43 |  |  | 22d | 0d |  | ОВВ ПИР | 16h | ОВВ ПИР | ПД |  |  |
| 45 | 1.1.4.10.5 | Выдача ГИПу (ПЗУ) |  | 1d | 2023-04-04 | 2023-04-04 | 36, 44 |  |  | 22d |  |  | ОАД | 8h | ОАД | ПД |  |  |
| 46 | 1.1.4.10.6 | Разработка рабочих чертежей (АД) |  | 10d | 2023-03-22 | 2023-04-04 | 12, 35, 62 |  |  | 0d |  |  | ОАД | 80h | ОАД | ПД; РД |  |  |
| 47 | 1.1.4.10.7 | Нормоконтроль рабочих чертежей (ОАД) |  | 2d | 2023-04-05 | 2023-04-06 | 46 |  |  | 19d | 0d |  | ОВВ ПИР | 16h | ОВВ ПИР | РД |  |  |
| 48 | 1.1.4.10.8 | Выдача ГИПу рабочих чертежей (АД) |  | 1d | 2023-04-07 | 2023-04-07 | 47 |  |  | 19d | 0d |  | ОАД | 8h | ОАД | РД |  |  |
| 49 | 1.1.5 | **Электротехнический отдел** | inactive | 0d | 2023-03-16 | 2023-03-16 |  |  |  | 12d |  |  |  |  |  |  | 06 |  |
| 50 | 1.1.5.1 | **ВЛ-6, 35, 110 кВ** | inactive | 0d | 2023-03-16 | 2023-03-16 |  |  |  | 12d |  |  |  |  |  |  |  |  |
| 51 | 1.1.5.1.1 | Задание СО на расчет фундаментов опор под ВЛ-6, 35 110 кВ и эстакады (при необходимости) | milestone, inactive | 0d | 2023-03-16 | 2023-03-16 | 5, 33 |  |  | 12d | 0d |  | ЭТО |  | ЭТО |  |  | 0605-08, 0605-07; 0605-09; 0622-08; 0622-07; 0622-09 |
| 52 | 1.1.5.1.2 | На разработку раздела ООС (ВЛ-6, 35, 110 кВ) ЭТО | milestone, inactive | 0d | 2023-03-16 | 2023-03-16 | 51 |  |  | 27d | 13d |  | ЭТО |  | ЭТО |  |  | 0618-01 |
| 53 | 1.1.5.1.3 | Задание на отвод земель (ВЛ-6, 35 110 кВ) ЭТО | milestone, inactive | 0d | 2023-03-16 | 2023-03-16 | 51 |  |  | 12d | 5d |  | ЭТО |  | ЭТО |  |  | 0602-02; 0602-03 |
| 54 | 1.1.5.1.4 | На составление смет РД (ВЛ-6, 35 110 кВ) ЭТО | milestone, inactive | 0d | 2023-03-16 | 2023-03-16 | 56 |  |  | 18d |  |  | ЭТО |  | ЭТО |  |  | 0609-01 |

| ID | WBS | Task | Type | Duration | Start | Finish | Predecessors | Baseline start | Baseline duration | Total slack | Free slack | Constraint | Resources | Work | Text3 | Text10 | Text26 |
| --- | --- | --- | --- | --- | --- | --- | --- | --- | --- | --- | --- | --- | --- | --- | --- | --- | --- |
| 55 | 1.1.5.1.5 | **Документация ГИПу** | inactive | 0d | 2023-03-16 | 2023-03-16 |  |  |  | 18d |  |  |  |  |  |  |  |
| 56 | 1.1.5.1.5.1 | Разработка рабочих чертежей (ВЛ-6, 35 110 кВ ) ЭТО | milestone, inactive | 0d | 2023-03-16 | 2023-03-16 | 51 |  |  | 18d | 0d |  | ЭТО |  | ЭТО |  |  |
| 57 | 1.1.5.1.5.2 | Нормоконтроль рабочих чертежей ЭТО (ВЛ-6, 35 110 кВ ) ЭТО | milestone, inactive | 0d | 2023-03-16 | 2023-03-16 | 56 |  |  | 35d | 0d |  | ОВВ ПИР |  | ЭТО |  |  |
| 58 | 1.1.5.1.5.3 | Выдача ГИПу рабочих чертежей (ВЛ-6, 35 110 кВ ) ЭТО | milestone, inactive | 0d | 2023-03-16 | 2023-03-16 | 57 |  |  | 35d | 16d |  | ЭТО |  | ЭТО |  |  |
| 59 | 1.1.6 | **Отдел тепловодоснабжения и пожаротушения** |  | 19d | 2023-03-08 | 2023-04-03 |  | 2015-02-16 | 6d | 7d |  |  |  | 144h |  |  |  |
| 60 | 1.1.6.1 | Выдача тома ПБ в отделы на отработку |  | 1d | 2023-03-22 | 2023-03-22 | 12, 33, 34 | 2015-01-30 | 1d | 23d | 0d | start no earlier than 2015-08-13 | ОТВиП | 8h | ОТВиП | ПД |  |
| 61 | 1.1.6.2 | Объем поверхностных стоков (ОГП) |  | 1d | 2023-03-17 | 2023-03-17 | 11 |  |  | 0d |  |  | ОТВиП | 8h | ОТВиП | ПД |  |
| 62 | 1.1.6.3 | Объем поверхностных стоков в ВОЗ (ОАД) |  | 1d | 2023-03-08 | 2023-03-08 | 32 |  |  | 9d | 0d |  | ОТВиП | 8h |  | ПД; РД |  |
| 63 | 1.1.6.4 | На составление смет (стадия РД) |  | 1d | 2023-03-16 | 2023-03-16 | 65 |  |  | 18d |  | start no earlier than 2023-03-16 | ОТВиП | 8h |  | РД |  |
| 64 | 1.1.6.5 | **Документация ГИПу** |  | 18d | 2023-03-09 | 2023-04-03 |  | 2015-02-16 | 5d | 18d |  |  |  | 112h |  |  |  |
| 65 | 1.1.6.5.1 | Разработка рабочих чертежей по сбору стоков |  | 5d | 2023-03-09 | 2023-03-15 | 62 |  |  | 18d | 0d |  | ОТВиП | 40h |  | 0% |  |
| 66 | 1.1.6.5.2 | Нормоконтроль рабочих чертежей по сбору стоков |  | 2d | 2023-03-16 | 2023-03-17 | 65 |  |  | 33d | 0d |  | ОВВ ПИР | 16h |  | 0% |  |
| 67 | 1.1.6.5.3 | Выдача ГИПу рабочих чертежей по сбору стоков |  | 1d | 2023-03-20 | 2023-03-20 | 66 |  |  | 33d | 14d |  | ОТВиП | 8h |  | 0% |  |
| 68 | 1.1.6.5.4 | Разработка ПБ |  | 3d | 2023-03-27 | 2023-03-29 | 17, 39 | 2015-02-11 | 5d | 23d | 0d |  | ОТВиП | 24h | ОТВиП | ПД |  |
| 69 | 1.1.6.5.5 | Нормоконтроль тома ПБ ОТВиП |  | 2d | 2023-03-30 | 2023-03-31 | 68 |  |  | 23d | 0d |  | ОВВ ПИР | 16h | ОВВ ПИР | ПД |  |
| 70 | 1.1.6.5.6 | Выдача ГИПу (ПБ) |  | 1d | 2023-04-03 | 2023-04-03 | 69 | 2015-02-16 | 0d | 23d |  | start no earlier than 2016-10-24 | ОТВиП | 8h | ОТВиП | ПД |  |
| 71 | 1.1.7 | **Строительный отдел** |  | 2d | 2023-03-23 | 2023-03-24 |  |  |  | 3d |  |  |  | 16h |  |  |  |
| 72 | 1.1.7.1 | Выдача задания СО в ОГП на ограждение шламовых амбаров, забурное устройство, колодец с шиберной задвижкой с объемами и спецификацией |  | 2d | 2023-03-23 | 2023-03-24 | 14 |  |  | 3d | 0d |  | СО 2 | 16h | СО 1,2 |  |  |
| 73 | 1.1.7.2 | Разработка рабочих чертежей (ВЛ-6, 35 110 кВ ) СО | milestone, inactive | 0d | 2023-03-16 | 2023-03-16 | 51 |  |  | 18d | 0d |  | ЭТО |  | СО 1,2 |  |  |
| 74 | 1.1.7.3 | Нормоконтроль рабочих чертежей ЭТО (ВЛ-6, 35 110 кВ ) СО | milestone, inactive | 0d | 2023-03-16 | 2023-03-16 | 73 |  |  | 35d | 0d |  | ОВВ ПИР |  | ОВВ ПИР |  |  |
| 75 | 1.1.7.4 | Выдача ГИПу рабочих чертежей (ВЛ-6, 35 110 кВ ) СО | milestone, inactive | 0d | 2023-03-16 | 2023-03-16 | 74 |  |  | 35d | 16d |  | ЭТО |  | СО 1,2 |  |  |
| 76 | 1.1.7.5 | На составление смет РД (ВЛ-6, 35 110 кВ) СО | milestone, inactive | 0d | 2023-03-16 | 2023-03-16 | 73 |  |  | 18d |  |  | ЭТО |  | СО 1,2 |  | 0609-01 |
| 77 | 1.1.8 | **Отдел Геотехническго мониторинга и прогнозного моделирования** | inactive | 0d | 2023-03-16 | 2023-03-16 |  |  |  | 18d |  |  |  |  |  |  |  |
| 78 | 1.1.8.1 | **Разработка ТСГ и ГТМ** | inactive | 0d | 2023-03-16 | 2023-03-16 |  |  |  | 18d |  |  |  |  |  |  |  |
| 79 | 1.1.8.1.1 | Разработка РД ТСГ и ГТМ | milestone, inactive | 0d | 2023-03-16 | 2023-03-16 | 73 |  |  | 18d | 0d |  | ГГТМиПМ |  | ОГТМиПМ |  |  |
| 80 | 1.1.8.1.2 | Задание на разработку ПОС (ГГТМиПМ) | milestone, inactive | 0d | 2023-03-16 | 2023-03-16 | 79 |  |  | 24d |  |  | ГГТМиПМ |  | ОГТМиПМ |  |  |
| 81 | 1.1.8.1.3 | На составление смет РД ТСГ и ГТМ (ГГТМиПМ) | milestone, inactive | 0d | 2023-03-16 | 2023-03-16 | 79 |  |  | 18d |  |  | ГГТМиПМ |  | ОГТМиПМ |  |  |
| 82 | 1.1.8.1.4 | Нормоконтроль рабочих чертежей ТСГ и ГТМ (ГГТМиПМ) | milestone, inactive | 0d | 2023-03-16 | 2023-03-16 | 79 |  |  | 35d | 0d |  | ОВВ ПИР |  | ОВВ ПИР |  |  |
| 83 | 1.1.8.1.5 | Выдача ГИПу Рабочие чертежи ТСГ и ГТМ (ГГТМиПМ) | milestone, inactive | 0d | 2023-03-16 | 2023-03-16 | 82 |  |  | 35d | 16d |  | ГГТМиПМ |  | ОГТМиПМ |  |  |

| ID | WBS | Task | Duration | Start | Finish | Predecessors | Baseline start | Baseline duration | Total slack | Free slack | Constraint | Resources | Work | Text3 | Text10 |
| --- | --- | --- | --- | --- | --- | --- | --- | --- | --- | --- | --- | --- | --- | --- | --- |
| 84 | 1.1.9 | **Отдел землеустройства** | 4d | 2023-03-24 | 2023-03-29 |  | 2015-02-24 | 10d | 7d |  |  |  | 40h |  |  |
| 85 | 1.1.9.1 | Подготовка материалов к отводу по проекту | 3d | 2023-03-24 | 2023-03-28 | 15, 36, 53 | 2015-02-04 | 2d | 7d | 0d |  | ОЗ | 24h | ОЗ | ПД; РД |
| 86 | 1.1.9.2 | Выдача площадей в ОГП | 1d | 2023-03-29 | 2023-03-29 | 85 | 2015-02-05 | 1d | 18d | 0d |  | ОЗ | 8h | ОЗ | ПД |
| 87 | 1.1.9.3 | Задание для ООС и ОПОС - потребности в землях | 1d | 2023-03-29 | 2023-03-29 | 85 | 2015-01-19 | 1d | 7d | 0d |  | ОЗ | 8h | ОЗ | ПД; РД |
| 88 | 1.1.10 | **Отдел смет** | 12d | 2023-04-12 | 2023-04-27 |  | 2015-02-27 | 13d | 0d |  |  |  | 80h |  |  |
| 89 | 1.1.10.1 | Объектные и локальные сметные расчеты | 4d | 2023-04-12 | 2023-04-17 | 16, 38, 54, 76, 81, 102, 63 | 2015-02-13 | 5d | 0d |  |  | ОС 1 | 32h | ОС | РД; ПД |
| 90 | 1.1.10.2 | Разработка предварительного сводного сметного расчета | 2d | 2023-04-18 | 2023-04-19 | 89 | 2015-02-16 | 1d | 0d |  |  | ОС 1 | 16h | ОС | РД; ПД |
| 91 | 1.1.10.3 | **Документация ГИПу** | 4d | 2023-04-24 | 2023-04-27 |  | 2015-02-27 | 5d | 5d |  |  |  | 32h |  |  |
| 92 | 1.1.10.3.1 | Сводный сметный расчет по стадии РД | 3d | 2023-04-24 | 2023-04-26 | 89, 90, 103, 97 |  |  | 5d | 0d |  | ОС 1 | 24h | ОС | РД |
| 93 | 1.1.10.3.2 | Выдача ГИПу сметной документации по стадии РД | 1d | 2023-04-27 | 2023-04-27 | 92 |  |  | 5d | 0d |  | ОС 1 | 8h | ОС | РД |
| 94 | 1.1.11 | **Отдел ПОС** | 26d | 2023-03-30 | 2023-05-04 |  |  |  | 0d |  |  |  | 112h |  |  |
| 95 | 1.1.11.1 | Подготовительный комплекс | 1d | 2023-03-30 | 2023-03-30 | 87 |  |  | 19d | 14d |  | ОПОС | 8h | ОПОС | ПД;РД |
| 96 | 1.1.11.2 | Задание в ООВОС на период строительства | 1d | 2023-04-20 | 2023-04-20 | 90, 95 |  |  | 5d | 0d |  | ОПОС | 8h | ОПОС | РД; ПД |
| 97 | 1.1.11.3 | Задание в ОС на расчеты ССР | 1d | 2023-04-20 | 2023-04-20 | 90 |  |  | 6d | 1d |  | ОПОС | 8h | ОПОС | РД |
| 98 | 1.1.11.4 | Разработка ПОС | 8d | 2023-04-20 | 2023-05-01 | 24, 43, 80, 87, 90 |  |  | 0d |  |  | ОПОС | 64h | ОПОС | ПД |
| 99 | 1.1.11.5 | Нормоконтроль ПОС | 2d | 2023-05-02 | 2023-05-03 | 98 |  |  | 0d |  |  | ОВВ ПИР | 16h | ОВВ ПИР | ПД |
| 100 | 1.1.11.6 | Выдача ГИПу ПОС | 1d | 2023-05-04 | 2023-05-04 | 99 |  |  | 0d |  |  | ОПОС | 8h | ОПОС | ПД |
| 101 | 1.1.12 | **Отдел оценки воздействия на окружающую среду** | 17d | 2023-03-30 | 2023-04-21 |  | 2015-02-27 | 12d | 7d |  |  |  | 104h |  |  |
| 102 | 1.1.12.1 | На составление смет по рекультивации земель | 2d | 2023-04-05 | 2023-04-06 | 13, 87 | 2015-01-22 | 2d | 3d |  | start no earlier than 2016-04-29 | ООВОС | 16h | ООВОС | РД; ПД |
| 103 | 1.1.12.2 | На составление смет по выдаче компенсационных платежей | 1d | 2023-04-21 | 2023-04-21 | 96 | 2015-02-20 | 3d | 5d | 0d |  | ООВОС | 8h | ООВОС | РД |
| 104 | 1.1.12.3 | Разработка разделов ООС и РКЗ | 3d | 2023-04-05 | 2023-04-07 | 13, 52, 62 | 2015-02-20 | 3d | 14d | 0d |  | ООВОС | 24h | ООВОС | ПД |
| 105 | 1.1.12.4 | **Документация ГИПу** | 12d | 2023-03-30 | 2023-04-14 |  | 2015-02-27 | 4d | 14d |  |  |  | 56h |  |  |
| 106 | 1.1.12.4.1 | Отработка разделов ПЗ | 1d | 2023-03-30 | 2023-03-30 | 18, 87, 112 | 2015-02-09 | 1d | 21d | 0d |  | ООВОС | 8h | ООВОС | ПД |
| 107 | 1.1.12.4.2 | Выдача ГИПу (разделов ПЗ) (ОООС) | 1d | 2023-03-31 | 2023-03-31 | 86, 106 | 2015-02-10 | 1d | 21d | 0d |  | ООВОС | 8h | ООВОС | ПД |
| 108 | 1.1.12.4.3 | Оформление и комплектация раздела ООС и РКЗ | 2d | 2023-04-10 | 2023-04-11 | 104 | 2015-02-26 | 2d | 14d | 0d | start no earlier than 2016-06-01 | ООВОС | 16h | ООВОС | ПД |
| 109 | 1.1.12.4.4 | Нормоконтроль разделов ООС и РКЗ | 2d | 2023-04-12 | 2023-04-13 | 108 | 2015-02-27 | 1d | 14d | 0d |  | ОВВ ПИР | 16h | ОВВ ПИР | ПД |
| 110 | 1.1.12.4.5 | Выдача ГИПу (разделы ООС и РКЗ) | 1d | 2023-04-14 | 2023-04-14 | 109 | 2015-02-27 | 0d | 14d |  |  | ООВОС | 8h | ООВОС | ПД |

| ID | WBS | Task | Duration | Start | Finish | Predecessors | Baseline start | Baseline duration | Total slack | Free slack | Constraint | Resources | Work | Text3 | Text10 |
| --- | --- | --- | --- | --- | --- | --- | --- | --- | --- | --- | --- | --- | --- | --- | --- |
| 111 | 1.1.13 | **ГИП** | 33d | 2023-03-22 | 2023-05-05 |  | 2015-02-09 | 0d | 0d |  |  |  | 56h |  |  |
| 112 | 1.1.13.1 | Выдача ПЗ в отделы на отработку | 1d | 2023-03-22 | 2023-03-22 | 12 | 2015-02-09 | 0d | 25d | 1d |  | ГИП | 8h | ГИП | ПД |
| 113 | 1.1.13.2 | Отработка тома ПЗ, ПЗУ | 1d | 2023-04-03 | 2023-04-03 | 20, 41, 42, 106, 107, 112 |  |  | 21d | 0d | finish no earlier than 2016-11-28 | ГИП | 8h | ГИП | ПД |
| 114 | 1.1.13.3 | Нормоконтроль тома ПЗ, ПЗУ | 2d | 2023-04-04 | 2023-04-05 | 113 |  |  | 21d |  |  | ОВВ ПИР | 16h | ОВВ ПИР | ПД |
| 115 | 1.1.13.4 | Выдача ПД Заказчику | 1d | 2023-05-05 | 2023-05-05 | 23, 26, 45, 70, 92, 100, 110, 114 | 2015-03-02 | 1d | 0d |  | start no earlier than 2023-05-01 | ГИП | 8h | ГИП | ПД |
| 116 | 1.1.13.5 | Выдача РД Заказчику | 1d | 2023-04-10 | 2023-04-10 | 29, 48, 58, 75, 83, 67 |  |  | 19d |  |  | ГИП | 8h | ГИП | РД |
| 117 | 1.1.13.6 | Выдача СД Заказчику | 1d | 2023-04-28 | 2023-04-28 | 93 |  |  | 5d |  |  | ГИП | 8h | ГИП | РД |
